How a schedule from MS Project XML changed from version to version. A marks actual dates.

## Version 1 (saved 2017-08-13, file test.xml)

| ID | Task | Start | Finish | Predecessors | Complete | Constraint |
| --- | --- | --- | --- | --- | --- | --- |
| 1 | 住宅建设 | 2004-01-01 | 2004-07-30 |  |  |  |
| 2 | 单户住宅: 建筑师设计(280 平方米，并带有完整地下室) | 2004-01-01 | 2004-07-30 |  |  |  |
| 3 | 一般要求 | 2004-01-01 | 2004-01-29 |  |  |  |
| 4 | 最终确定计划并与业主和建筑师一起确定估计值 | 2004-01-01 | 2004-01-28 |  | 100% |  |
| 5 | 签定合同和通知以继续进行 | 2004-01-29 | 2004-01-29 | 4 | 100% |  |
| 6 | 申请许可 | 2004-01-29 | 2004-01-29 |  |  |  |
| 7 | 获得地基许可 |  |  | 5 | 100% |  |
| 8 | 获得框架许可 | 2004-01-29 | 2004-01-29 | 5 | 100% |  |
| 9 | 获得电气许可 | 2004-01-29 | 2004-01-29 | 5 | 100% |  |
| 10 | 获得管道许可 | 2004-01-29 | 2004-01-29 | 5 | 100% |  |
| 11 | 获得取暖、通风和空调许可 | 2004-01-29 | 2004-01-29 | 5 | 100% |  |
| 12 | 获得其他许可 | 2004-01-29 | 2004-01-29 | 5 | 100% |  |
| 13 | 现场工作 | 2004-01-30 | 2004-02-03 |  |  |  |
| 14 | 清理和挖掘场地 | 2004-01-30 | 2004-01-30 | 7, 8, 9, 10, 12, 11 | 100% |  |
| 15 | 安装临时供电设施 | 2004-02-02 | 2004-02-02 | 14 | 100% |  |
| 16 | 安装地下设施 | 2004-02-03 | 2004-02-03 | 15 | 100% |  |
| 17 | 地基 | 2004-02-04 | 2004-04-01 |  |  |  |
| 18 | 挖掘地基 | 2004-02-04 | 2004-02-06 | 16 | 100% |  |
| 19 | 为地下室墙搭建模板 | 2004-02-09 | 2004-02-25 | 18 | 100% |  |
| 20 | 为地基和地下室墙浇筑混凝土 | 2004-02-26 | 2004-03-12 | 19 | 100% |  |
| 21 | 对地下室墙进行 7 天硬化 | 2004-03-15 | 2004-03-23 | 20 | 100% |  |
| 22 | 拆除地下室墙的模板 | 2004-03-24 | 2004-03-25 | 21 | 100% |  |
| 23 | 对地下室墙进行防水和保温处理 | 2004-03-26 | 2004-03-29 | 22 | 100% |  |
| 24 | 进行地基检查 | 2004-03-30 | 2004-03-30 | 23, 18 | 100% |  |
| 25 | 回填地基 | 2004-03-31 | 2004-04-01 | 24 | 100% |  |
| 26 | 搭建框架 | 2004-04-02 | 2004-05-03 |  |  |  |
| 27 | 安装第一层楼板托梁 | 2004-04-02 | 2004-04-05 | 25 | 100% |  |
| 28 | 安装第一层楼板 | 2004-04-06 | 2004-04-07 | 27 | 100% |  |
| 29 | 搭建第一层墙壁的框架 | 2004-04-08 | 2004-04-13 | 28 | 100% |  |
| 30 | 搭建第一层转角的框架 | 2004-04-14 | 2004-04-14 | 29 | 100% |  |
| 31 | 安装第二层楼板托梁 | 2004-04-15 | 2004-04-16 | 30 | 100% |  |
| 32 | 安装第二层楼板 | 2004-04-19 | 2004-04-20 | 31 |  |  |
| 33 | 搭建第二层墙壁的框架 | 2004-04-21 | 2004-04-23 | 32 |  |  |
| 34 | 搭建第二层转角的框架 | 2004-04-22 | 2004-04-24 | 33 |  | finish no later than 2004-04-24 |
| 35 | 完成屋顶框架的搭建 | 2004-04-28 | 2004-04-30 | 34 | 100% |  |
| 36 | 进行框架检查 | 2004-05-03 | 2004-05-03 | 35 |  |  |
| 37 | 干燥内部 | 2004-05-03 | 2004-06-01 |  |  |  |
| 38 | 安装第一层模板 | 2004-05-04 | 2004-05-06 | 36 | 100% |  |
| 39 | 安装第二层模板 | 2004-05-07 | 2004-05-11 | 38 | 33% |  |
| 40 | 安装屋顶盖板 | 2004-05-03 | 2004-05-05 | 35 | 100% |  |
| 41 | 安装油毡、遮雨板和砾石 | 2004-05-19 | 2004-05-21 | 49 |  |  |
| 42 | 安装第一层的户门 | 2004-05-24 | 2004-05-24 | 41 |  |  |
| 43 | 安装第一层的窗户 | 2004-05-27 | 2004-05-31 | 42 |  | start no earlier than 2004-05-27 |
| 44 | 安装第二层的窗户 | 2004-05-28 | 2004-06-01 | 43 |  |  |
| 45 | 外部完成 | 2004-06-02 | 2004-06-28 |  |  |  |
| 46 | 完成外部砖墙 | 2004-06-02 | 2004-06-23 | 44 |  |  |
| 47 | 完成外部侧线 | 2004-05-25 | 2004-05-27 | 46 |  | finish no later than 2004-05-27 |
| 48 | 工具 Rough-Ins 及完成混凝土浇注 | 2004-05-06 | 2004-06-03 |  |  |  |
| 49 | 安装管道 | 2004-05-12 | 2004-05-18 | 40, 39 | 100% |  |
| 50 | 对安装的管道进行检查 | 2004-05-19 | 2004-05-19 | 49 |  |  |
| 51 | 为地下室地面浇筑混凝土 | 2004-05-20 | 2004-06-03 | 50 |  |  |
| 52 | 安装电气设备 | 2004-05-12 | 2004-05-18 | 40, 39 | 60% |  |
| 53 | 对安装的电气设备进行检查 | 2004-05-19 | 2004-05-19 | 52 |  |  |
| 54 | 安装取暖、通风和空调设备 | 2004-05-20 | 2004-05-24 | 53 |  |  |
| 55 | 对安装的取暖、通风和空调设备进行检查 | 2004-05-25 | 2004-05-25 | 54 |  |  |
| 56 | 安装通讯设备(电话、电缆、计算机和报警设备等) | 2004-05-06 | 2004-05-07 | 40 | 50% |  |
| 57 | 完成内部工作 | 2004-06-02 | 2004-07-13 |  |  |  |
| 58 | 保温 | 2004-06-02 | 2004-06-16 |  |  |  |
| 59 | 安装墙壁保温材料: 一层 | 2004-06-02 | 2004-06-02 | 38, 44, 56, 54, 52, 39 |  |  |
| 60 | 安装墙壁保温材料: 二层 | 2004-06-03 | 2004-06-03 | 59 |  |  |
| 61 | 安装屋顶保温材料: 二层 | 2004-06-15 | 2004-06-15 | 67, 60 |  |  |
| 62 | 进行保温检查 | 2004-06-16 | 2004-06-16 | 61 |  |  |
| 63 | 干饰面内墙 | 2004-06-03 | 2004-06-15 |  |  |  |
| 64 | 安装干饰面内墙: 一层墙壁 | 2004-06-03 | 2004-06-04 | 59 |  |  |
| 65 | 安装干饰面内墙: 一层天花板 | 2004-06-07 | 2004-06-08 | 64 |  |  |
| 66 | 安装干饰面内墙: 二层墙壁 | 2004-06-09 | 2004-06-10 | 65, 60 |  |  |
| 67 | 安装干饰面内墙: 二层天花板 | 2004-06-11 | 2004-06-14 | 66 |  |  |
| 68 | 测量并抹平一层的干饰面内墙 | 2004-06-09 | 2004-06-09 | 65 |  |  |
| 69 | 测量并抹平二层的干饰面内墙 | 2004-06-15 | 2004-06-15 | 67, 68 |  |  |
| 70 | 刷油漆及贴墙纸 | 2004-06-10 | 2004-07-02 |  |  |  |

| ID | Task | Start | Finish | Predecessors |
| --- | --- | --- | --- | --- |
| 71 | 为一层除了入口和厨房以外的所有部分添加表面纹理 | 2004-06-10 | 2004-06-10 | 68 |
| 72 | 为一层除了入口和厨房以外的所有部分刷油漆 | 2004-06-11 | 2004-06-11 | 71 |
| 73 | 为一层的入口和厨房贴墙纸 | 2004-06-14 | 2004-06-14 | 72 |
| 74 | 为二层的所有部分添加表面纹理 | 2004-06-11 | 2004-06-11 | 71 |
| 75 | 为二层的所有部分刷油漆 | 2004-06-14 | 2004-06-14 | 74 |
| 76 | 油漆外部侧线和装饰物 | 2004-06-29 | 2004-07-02 | 47 |
| 77 | 橱柜 | 2004-06-15 | 2004-06-22 |  |
| 78 | 一层安装: 厨房橱柜 | 2004-06-15 | 2004-06-16 | 73 |
| 79 | 一层安装: 主卫生间和客人用卫生间橱柜 | 2004-06-17 | 2004-06-17 | 78 |
| 80 | 二层安装: 主卫生间和私人卫生间橱柜 | 2004-06-18 | 2004-06-18 | 79 |
| 81 | 安装护墙板、装饰线和装饰物 | 2004-06-21 | 2004-06-22 | 80 |
| 82 | 完成管道安装 | 2004-06-17 | 2004-06-24 |  |
| 83 | 完成一层: 厨房管道 | 2004-06-17 | 2004-06-17 | 78, 50 |
| 84 | 完成一层: 主卫生间和客人用卫生间管道 | 2004-06-18 | 2004-06-21 | 83, 79 |
| 85 | 完成二层: 主卫生间和私人卫生间管道 | 2004-06-22 | 2004-06-23 | 84, 80 |
| 86 | 进行管道安装完成后的检查 | 2004-06-24 | 2004-06-24 | 85 |
| 87 | 完成电气安装 | 2004-06-24 | 2004-06-28 |  |
| 88 | 完成一层与维护面板间的电路 | 2004-06-24 | 2004-06-24 | 85, 53 |
| 89 | 完成二层与维护面板间的电路 | 2004-06-25 | 2004-06-25 | 88 |
| 90 | 进行电气安装完成后的检查 | 2004-06-28 | 2004-06-28 | 89 |
| 91 | 完成通讯系统的布线(包括电话、电缆、计算机和报警系统等) | 2004-06-25 | 2004-06-28 | 86 |
| 92 | 完成取暖、通风和空调系统的安装 | 2004-06-29 | 2004-07-01 |  |
| 93 | 完成一层安装: 区域 1 的取暖、通风和空调系统 | 2004-06-29 | 2004-06-29 | 91, 55 |
| 94 | 完成二层安装: 区域 2 的取暖、通风和空调系统 | 2004-06-30 | 2004-06-30 | 93 |
| 95 | 对取暖、通风和空调系统进行检查 | 2004-07-01 | 2004-07-01 | 94 |
| 96 | 地毯、磁砖和器具 | 2004-07-02 | 2004-07-13 |  |
| 97 | 入口、厨房和卫生间 | 2004-07-02 | 2004-07-06 | 90, 95 |
| 98 | 铺一层的地毯 | 2004-07-07 | 2004-07-08 | 97 |
| 99 | 铺二层的地毯 | 2004-07-09 | 2004-07-12 | 98 |
| 100 | 安装器具 | 2004-07-13 | 2004-07-13 | 99 |
| 101 | 绿化和土方工作 | 2004-07-05 | 2004-07-20 |  |
| 102 | 浇注混凝土车道和人行道 | 2004-07-05 | 2004-07-06 | 76 |
| 103 | 安装后院围栏 | 2004-07-14 | 2004-07-15 | 100, 102 |
| 104 | 铺草皮和完成绿化工作: 前院 | 2004-07-16 | 2004-07-19 | 103 |
| 105 | 铺草皮和完成绿化工作: 后院 | 2004-07-20 | 2004-07-20 | 104 |
| 106 | 最终认可 | 2004-07-21 | 2004-07-30 |  |
| 107 | 为获得居住许可进行最后的检查 | 2004-07-21 | 2004-07-21 | 105, 95, 90, 86, 62, 81, 51 |
| 108 | 进行清理以便入住 | 2004-07-22 | 2004-07-22 | 100, 107 |
| 109 | 进行最后的浏览检查 | 2004-07-23 | 2004-07-23 | 108 |
| 110 | 完成逐项检查清单 | 2004-07-26 | 2004-07-30 | 109 |

## Version 2 (saved 2017-08-13, file RESCONST.xml)

Last finish stays 2004-07-30. Complete tasks 28 → 0.

Removed: 1 住宅建设

Changed:

| ID | Task | Start | Finish | Duration | Complete | Total float | Other |
| --- | --- | --- | --- | --- | --- | --- | --- |
| 1 | **单户住宅: 建筑师设计(280 平方米，并带有完整地下室)** |  |  | none → 152d |  | none → 0d |  |
| 2 | **一般要求** |  |  | none → 21d |  | none → 0d |  |
| 3 | 最终确定计划并与业主和建筑师一起确定估计值 |  |  | none → 20d | 100% → 0% | none → 0d | resources 总承包商 [50%]; 建筑师 [50%]; 业主 [12.08%]; 抵押贷款放款人 [12.08%] → 总承包商 [50%]; 建筑师 [50%]; 业主 [12%]; 抵押贷款放款人 [12%] |
| 4 | 签定合同和通知以继续进行 |  |  | none → 1d | 100% → 0% | none → 0d |  |
| 5 | **申请许可** |  |  | none → 0d |  | none → 0d |  |
| 6 | 获得地基许可 | none → 2004-01-29 | none → 2004-01-29 | none → 0d | 100% → 0% | none → 0d |  |
| 7 | 获得框架许可 |  |  | none → 0d | 100% → 0% | none → 0d |  |
| 8 | 获得电气许可 |  |  | none → 0d | 100% → 0% | none → 0d |  |
| 9 | 获得管道许可 |  |  | none → 0d | 100% → 0% | none → 0d |  |
| 10 | 获得取暖、通风和空调许可 |  |  | none → 0d | 100% → 0% | none → 0d |  |
| 11 | 获得其他许可 |  |  | none → 0d | 100% → 0% | none → 0d |  |
| 12 | **现场工作** |  |  | none → 3d |  | none → 0d |  |
| 13 | 清理和挖掘场地 |  |  | none → 1d | 100% → 0% | none → 0d |  |
| 14 | 安装临时供电设施 |  |  | none → 1d | 100% → 0% | none → 0d |  |
| 15 | 安装地下设施 |  |  | none → 1d | 100% → 0% | none → 0d |  |
| 16 | **地基** |  |  | none → 42d |  | none → 0d |  |
| 17 | 挖掘地基 |  |  | none → 3d | 100% → 0% | none → 0d |  |
| 18 | 为地下室墙搭建模板 |  |  | none → 13d | 100% → 0% | none → 0d |  |
| 19 | 为地基和地下室墙浇筑混凝土 |  |  | none → 12d | 100% → 0% | none → 0d |  |
| 20 | 对地下室墙进行 7 天硬化 |  |  | none → 7d | 100% → 0% | none → 0d |  |
| 21 | 拆除地下室墙的模板 |  |  | none → 2d | 100% → 0% | none → 0d |  |
| 22 | 对地下室墙进行防水和保温处理 |  |  | none → 2d | 100% → 0% | none → 0d |  |
| 23 | 进行地基检查 |  |  | none → 1d | 100% → 0% | none → 0d |  |
| 24 | 回填地基 |  |  | none → 2d | 100% → 0% | none → 0d |  |
| 25 | **搭建框架** |  |  | none → 22d |  | none → 0d |  |
| 26 | 安装第一层楼板托梁 |  |  | none → 2d | 100% → 0% | none → 0d |  |
| 27 | 安装第一层楼板 |  |  | none → 2d | 100% → 0% | none → 0d |  |
| 28 | 搭建第一层墙壁的框架 |  |  | none → 4d | 100% → 0% | none → 0d |  |
| 29 | 搭建第一层转角的框架 |  |  | none → 1d | 100% → 0% | none → 0d |  |
| 30 | 安装第二层楼板托梁 |  |  | none → 2d | 100% → 0% | none → 0d |  |
| 31 | 安装第二层楼板 |  |  | none → 2d |  | none → 0d |  |
| 32 | 搭建第二层墙壁的框架 |  |  | none → 3d |  | none → 0d |  |
| 33 | 搭建第二层转角的框架 | 2004-04-22 → 2004-04-26 (+4d) | 2004-04-24 → 2004-04-27 (+3d) | none → 2d |  | none → 0d | constraint finish no later than 2004-04-24 → none |
| 34 | 完成屋顶框架的搭建 |  |  | none → 3d | 100% → 0% | none → 0d |  |
| 35 | 进行框架检查 |  |  | none → 1d |  | none → 0d |  |
| 36 | **干燥内部** |  |  | none → 22d |  | none → 0d |  |
| 37 | 安装第一层模板 |  |  | none → 3d | 100% → 0% | none → 0d |  |
| 38 | 安装第二层模板 |  |  | none → 3d | 33% → 0% | none → 0d |  |
| 39 | 安装屋顶盖板 |  |  | none → 3d | 100% → 0% | none → 4d |  |
| 40 | 安装油毡、遮雨板和砾石 |  |  | none → 3d |  | none → 0d |  |
| 41 | 安装第一层的户门 |  |  | none → 1d |  | none → 0d |  |
| 42 | 安装第一层的窗户 | 2004-05-27 → 2004-05-25 (-2d) | 2004-05-31 → 2004-05-27 (-4d) | none → 3d |  | none → 0d | constraint start no earlier than 2004-05-27 → none |
| 43 | 安装第二层的窗户 |  |  | none → 3d |  | none → 0d |  |
| 44 | **外部完成** |  |  | none → 19d |  | none → 5d |  |
| 45 | 完成外部砖墙 |  |  | none → 16d |  | none → 5d |  |
| 46 | 完成外部侧线 | 2004-05-25 → 2004-06-24 (+30d) | 2004-05-27 → 2004-06-28 (+32d) | none → 3d |  | none → 5d | constraint finish no later than 2004-05-27 → none |
| 47 | **工具 Rough-Ins 及完成混凝土浇注** |  |  | none → 21d |  | none → 4d |  |
| 48 | 安装管道 |  |  | none → 5d | 100% → 0% | none → 0d |  |
| 49 | 对安装的管道进行检查 |  |  | none → 1d |  | none → 20d |  |
| 50 | 为地下室地面浇筑混凝土 |  |  | none → 11d |  | none → 33d |  |
| 51 | 安装电气设备 |  |  | none → 5d | 60% → 0% | none → 6d |  |
| 52 | 对安装的电气设备进行检查 |  |  | none → 1d |  | none → 6d |  |
| 53 | 安装取暖、通风和空调设备 |  |  | none → 3d |  | none → 6d |  |
| 54 | 对安装的取暖、通风和空调设备进行检查 |  |  | none → 1d |  | none → 24d |  |
| 55 | 安装通讯设备(电话、电缆、计算机和报警设备等) |  |  | none → 2d | 50% → 0% | none → 17d |  |
| 56 | **完成内部工作** |  |  | none → 30d |  | none → 0d |  |
| 57 | **保温** |  |  | none → 11d |  | none → 0d |  |
| 58 | 安装墙壁保温材料: 一层 |  |  | none → 1d |  | none → 0d |  |
| 59 | 安装墙壁保温材料: 二层 |  |  | none → 1d |  | none → 27d |  |
| 60 | 安装屋顶保温材料: 二层 |  |  | none → 1d |  | none → 24d |  |
| 61 | 进行保温检查 |  |  | none → 1d |  | none → 24d |  |
| 62 | **干饰面内墙** |  |  | none → 9d |  | none → 0d |  |
| 63 | 安装干饰面内墙: 一层墙壁 |  |  | none → 2d |  | none → 0d |  |
| 64 | 安装干饰面内墙: 一层天花板 |  |  | none → 2d |  | none → 0d |  |
| 65 | 安装干饰面内墙: 二层墙壁 |  |  | none → 2d |  | none → 24d |  |
| 66 | 安装干饰面内墙: 二层天花板 |  |  | none → 2d |  | none → 24d |  |
| 67 | 测量并抹平一层的干饰面内墙 |  |  | none → 1d |  | none → 0d |  |
| 68 | 测量并抹平二层的干饰面内墙 |  |  | none → 1d |  | none → 33d |  |
| 69 | **刷油漆及贴墙纸** |  |  | none → 17d |  | none → 0d |  |
| 70 | 为一层除了入口和厨房以外的所有部分添加表面纹理 |  |  | none → 1d |  | none → 0d |  |

| ID | Task | Duration | Total float |
| --- | --- | --- | --- |
| 71 | 为一层除了入口和厨房以外的所有部分刷油漆 | none → 1d | none → 0d |
| 72 | 为一层的入口和厨房贴墙纸 | none → 1d | none → 0d |
| 73 | 为二层的所有部分添加表面纹理 | none → 1d | none → 34d |
| 74 | 为二层的所有部分刷油漆 | none → 1d | none → 34d |
| 75 | 油漆外部侧线和装饰物 | none → 4d | none → 5d |
| 76 | **橱柜** | none → 6d | none → 0d |
| 77 | 一层安装: 厨房橱柜 | none → 2d | none → 0d |
| 78 | 一层安装: 主卫生间和客人用卫生间橱柜 | none → 1d | none → 0d |
| 79 | 二层安装: 主卫生间和私人卫生间橱柜 | none → 1d | none → 1d |
| 80 | 安装护墙板、装饰线和装饰物 | none → 2d | none → 20d |
| 81 | **完成管道安装** | none → 6d | none → 0d |
| 82 | 完成一层: 厨房管道 | none → 1d | none → 0d |
| 83 | 完成一层: 主卫生间和客人用卫生间管道 | none → 2d | none → 0d |
| 84 | 完成二层: 主卫生间和私人卫生间管道 | none → 2d | none → 0d |
| 85 | 进行管道安装完成后的检查 | none → 1d | none → 0d |
| 86 | **完成电气安装** | none → 3d | none → 1d |
| 87 | 完成一层与维护面板间的电路 | none → 1d | none → 3d |
| 88 | 完成二层与维护面板间的电路 | none → 1d | none → 3d |
| 89 | 进行电气安装完成后的检查 | none → 1d | none → 3d |
| 90 | 完成通讯系统的布线(包括电话、电缆、计算机和报警系统等) | none → 2d | none → 0d |
| 91 | **完成取暖、通风和空调系统的安装** | none → 3d | none → 0d |
| 92 | 完成一层安装: 区域 1 的取暖、通风和空调系统 | none → 1d | none → 0d |
| 93 | 完成二层安装: 区域 2 的取暖、通风和空调系统 | none → 1d | none → 0d |
| 94 | 对取暖、通风和空调系统进行检查 | none → 1d | none → 0d |
| 95 | **地毯、磁砖和器具** | none → 8d | none → 0d |
| 96 | 入口、厨房和卫生间 | none → 3d | none → 0d |
| 97 | 铺一层的地毯 | none → 2d | none → 0d |
| 98 | 铺二层的地毯 | none → 2d | none → 0d |
| 99 | 安装器具 | none → 1d | none → 0d |
| 100 | **绿化和土方工作** | none → 12d | none → 0d |
| 101 | 浇注混凝土车道和人行道 | none → 2d | none → 5d |
| 102 | 安装后院围栏 | none → 2d | none → 0d |
| 103 | 铺草皮和完成绿化工作: 前院 | none → 2d | none → 0d |
| 104 | 铺草皮和完成绿化工作: 后院 | none → 1d | none → 0d |
| 105 | **最终认可** | none → 8d | none → 0d |
| 106 | 为获得居住许可进行最后的检查 | none → 1d | none → 0d |
| 107 | 进行清理以便入住 | none → 1d | none → 0d |
| 108 | 进行最后的浏览检查 | none → 1d | none → 0d |
| 109 | 完成逐项检查清单 | none → 5d | none → 0d |

## Version 3 (saved 2017-08-13, file RESCONST2.xml)

Last finish stays 2004-07-30.

Changed:

| ID | Task | Other |
| --- | --- | --- |
| 3 | 最终确定计划并与业主和建筑师一起确定估计值 | resources 总承包商 [50%]; 建筑师 [50%]; 业主 [12%]; 抵押贷款放款人 [12%] → 总承包商 [50%]; 建筑师 [50%]; 业主 [12.08%]; 抵押贷款放款人 [12.08%] |

## Version 4 (saved 2017-08-13, file track.xml)

Last finish 2004-07-30 → 2004-07-22 (-8d). Complete tasks 0 → 1.

Added:

| ID | Task | Start | Finish |
| --- | --- | --- | --- |
| 1 | 住宅建设 | 2004-01-01 | 2004-07-22 |

Changed:

| ID | Task | Start | Finish | Duration | Complete | Total float |
| --- | --- | --- | --- | --- | --- | --- |
| 2 | 单户住宅: 建筑师设计(280 平方米，并带有完整地下室) |  | 2004-07-30 → 2004-07-22 (-8d) | 152d → none |  | 0d → none |
| 3 | 一般要求 |  |  | 21d → none |  | 0d → none |
| 4 | 最终确定计划并与业主和建筑师一起确定估计值 | 2004-01-01 A | 2004-01-28 A | 20d → none | 0% → 50% | 0d → none |
| 5 | 签定合同和通知以继续进行 |  |  | 1d → none |  | 0d → none |
| 6 | 申请许可 |  |  | 0d → none |  | 0d → none |
| 7 | 获得地基许可 |  |  | 0d → none |  | 0d → none |
| 8 | 获得框架许可 |  |  | 0d → none |  | 0d → none |
| 9 | 获得电气许可 |  |  | 0d → none |  | 0d → none |
| 10 | 获得管道许可 |  |  | 0d → none |  | 0d → none |
| 11 | 获得取暖、通风和空调许可 |  |  | 0d → none |  | 0d → none |
| 12 | 获得其他许可 |  |  | 0d → none |  | 0d → none |
| 13 | 现场工作 |  |  | 3d → none |  | 0d → none |
| 14 | 清理和挖掘场地 |  |  | 1d → none |  | 0d → none |
| 15 | 安装临时供电设施 |  |  | 1d → none |  | 0d → none |
| 16 | 安装地下设施 |  |  | 1d → none |  | 0d → none |
| 17 | 地基 |  | 2004-04-01 → 2004-03-24 (-8d) | 42d → none |  | 0d → none |
| 18 | 挖掘地基 |  |  | 3d → none |  | 0d → none |
| 19 | 为地下室墙搭建模板 |  | 2004-02-25 → 2004-02-13 (-12d) | 13d → none |  | 0d → none |
| 20 | 为地基和地下室墙浇筑混凝土 | 2004-02-26 → 2004-02-16 (-10d) | 2004-03-12 → 2004-02-24 (-17d) | 12d → none | 0% → 100% | 0d → none |
| 21 | 对地下室墙进行 7 天硬化 | 2004-03-15 → 2004-03-04 (-11d) | 2004-03-23 → 2004-03-09 (-14d) | 7d → none | 0% → 50% | 0d → none |
| 22 | 拆除地下室墙的模板 | 2004-03-24 → 2004-03-09 (-15d) | 2004-03-25 → 2004-03-11 (-14d) | 2d → none |  | 0d → none |
| 23 | 对地下室墙进行防水和保温处理 | 2004-03-26 → 2004-03-12 (-14d) | 2004-03-29 → 2004-03-15 (-14d) | 2d → none |  | 0d → none |
| 24 | 进行地基检查 | 2004-03-30 → 2004-03-16 (-14d) | 2004-03-30 → 2004-03-16 (-14d) | 1d → none |  | 0d → none |
| 25 | 回填地基 | 2004-03-31 → 2004-03-22 (-9d) | 2004-04-01 → 2004-03-24 (-8d) | 2d → none |  | 0d → none |
| 26 | 搭建框架 | 2004-04-02 → 2004-03-24 (-9d) | 2004-05-03 → 2004-04-23 (-10d) | 22d → none |  | 0d → none |
| 27 | 安装第一层楼板托梁 | 2004-04-02 → 2004-03-24 (-9d) | 2004-04-05 → 2004-03-26 (-10d) | 2d → none |  | 0d → none |
| 28 | 安装第一层楼板 | 2004-04-06 → 2004-03-26 (-11d) | 2004-04-07 → 2004-03-30 (-8d) | 2d → none |  | 0d → none |
| 29 | 搭建第一层墙壁的框架 | 2004-04-08 → 2004-03-30 (-9d) | 2004-04-13 → 2004-04-05 (-8d) | 4d → none |  | 0d → none |
| 30 | 搭建第一层转角的框架 | 2004-04-14 → 2004-04-05 (-9d) | 2004-04-14 → 2004-04-06 (-8d) | 1d → none |  | 0d → none |
| 31 | 安装第二层楼板托梁 | 2004-04-15 → 2004-04-06 (-9d) | 2004-04-16 → 2004-04-08 (-8d) | 2d → none |  | 0d → none |
| 32 | 安装第二层楼板 | 2004-04-19 → 2004-04-08 (-11d) | 2004-04-20 → 2004-04-12 (-8d) | 2d → none |  | 0d → none |
| 33 | 搭建第二层墙壁的框架 | 2004-04-21 → 2004-04-12 (-9d) | 2004-04-23 → 2004-04-15 (-8d) | 3d → none |  | 0d → none |
| 34 | 搭建第二层转角的框架 | 2004-04-26 → 2004-04-15 (-11d) | 2004-04-27 → 2004-04-19 (-8d) | 2d → none |  | 0d → none |
| 35 | 完成屋顶框架的搭建 | 2004-04-28 → 2004-04-19 (-9d) | 2004-04-30 → 2004-04-22 (-8d) | 3d → none |  | 0d → none |
| 36 | 进行框架检查 | 2004-05-03 → 2004-04-22 (-11d) | 2004-05-03 → 2004-04-23 (-10d) | 1d → none |  | 0d → none |
| 37 | 干燥内部 | 2004-05-03 → 2004-04-22 (-11d) | 2004-06-01 → 2004-05-24 (-8d) | 22d → none |  | 0d → none |
| 38 | 安装第一层模板 | 2004-05-04 → 2004-04-23 (-11d) | 2004-05-06 → 2004-04-28 (-8d) | 3d → none |  | 0d → none |
| 39 | 安装第二层模板 | 2004-05-07 → 2004-04-28 (-9d) | 2004-05-11 → 2004-05-03 (-8d) | 3d → none |  | 0d → none |
| 40 | 安装屋顶盖板 | 2004-05-03 → 2004-04-22 (-11d) | 2004-05-05 → 2004-04-27 (-8d) | 3d → none |  | 0d → none |
| 41 | 安装油毡、遮雨板和砾石 | 2004-05-19 → 2004-05-10 (-9d) | 2004-05-21 → 2004-05-13 (-8d) | 3d → none |  | 0d → none |
| 42 | 安装第一层的户门 | 2004-05-24 → 2004-05-13 (-11d) | 2004-05-24 → 2004-05-14 (-10d) | 1d → none |  | 0d → none |
| 43 | 安装第一层的窗户 | 2004-05-25 → 2004-05-14 (-11d) | 2004-05-27 → 2004-05-19 (-8d) | 3d → none |  | 0d → none |
| 44 | 安装第二层的窗户 | 2004-05-28 → 2004-05-19 (-9d) | 2004-06-01 → 2004-05-24 (-8d) | 3d → none |  | 0d → none |
| 45 | 外部完成 | 2004-06-02 → 2004-05-24 (-9d) | 2004-06-28 → 2004-06-18 (-10d) | 19d → none |  | 0d → none |
| 46 | 完成外部砖墙 | 2004-06-02 → 2004-05-24 (-9d) | 2004-06-23 → 2004-06-15 (-8d) | 16d → none |  | 0d → none |
| 47 | 完成外部侧线 | 2004-06-24 → 2004-06-15 (-9d) | 2004-06-28 → 2004-06-18 (-10d) | 3d → none |  | 0d → none |
| 48 | 工具 Rough-Ins 及完成混凝土浇注 | 2004-05-06 → 2004-04-27 (-9d) | 2004-06-03 → 2004-05-26 (-8d) | 21d → none |  | 0d → none |
| 49 | 安装管道 | 2004-05-12 → 2004-05-03 (-9d) | 2004-05-18 → 2004-05-10 (-8d) | 5d → none |  | 0d → none |
| 50 | 对安装的管道进行检查 | 2004-05-19 → 2004-05-10 (-9d) | 2004-05-19 → 2004-05-11 (-8d) | 1d → none |  | 0d → none |
| 51 | 为地下室地面浇筑混凝土 | 2004-05-20 → 2004-05-11 (-9d) | 2004-06-03 → 2004-05-26 (-8d) | 11d → none |  | 0d → none |
| 52 | 安装电气设备 | 2004-05-12 → 2004-05-03 (-9d) | 2004-05-18 → 2004-05-10 (-8d) | 5d → none |  | 0d → none |
| 53 | 对安装的电气设备进行检查 | 2004-05-19 → 2004-05-10 (-9d) | 2004-05-19 → 2004-05-11 (-8d) | 1d → none |  | 0d → none |
| 54 | 安装取暖、通风和空调设备 | 2004-05-20 → 2004-05-11 (-9d) | 2004-05-24 → 2004-05-14 (-10d) | 3d → none |  | 0d → none |
| 55 | 对安装的取暖、通风和空调设备进行检查 | 2004-05-25 → 2004-05-14 (-11d) | 2004-05-25 → 2004-05-17 (-8d) | 1d → none |  | 0d → none |
| 56 | 安装通讯设备(电话、电缆、计算机和报警设备等) | 2004-05-06 → 2004-04-27 (-9d) | 2004-05-07 → 2004-04-29 (-8d) | 2d → none |  | 0d → none |
| 57 | 完成内部工作 | 2004-06-02 → 2004-05-24 (-9d) | 2004-07-13 → 2004-07-05 (-8d) | 30d → none |  | 0d → none |
| 58 | 保温 | 2004-06-02 → 2004-05-24 (-9d) | 2004-06-16 → 2004-06-08 (-8d) | 11d → none |  | 0d → none |
| 59 | 安装墙壁保温材料: 一层 | 2004-06-02 → 2004-05-24 (-9d) | 2004-06-02 → 2004-05-25 (-8d) | 1d → none |  | 0d → none |
| 60 | 安装墙壁保温材料: 二层 | 2004-06-03 → 2004-05-25 (-9d) | 2004-06-03 → 2004-05-26 (-8d) | 1d → none |  | 0d → none |
| 61 | 安装屋顶保温材料: 二层 | 2004-06-15 → 2004-06-04 (-11d) | 2004-06-15 → 2004-06-07 (-8d) | 1d → none |  | 0d → none |
| 62 | 进行保温检查 | 2004-06-16 → 2004-06-07 (-9d) | 2004-06-16 → 2004-06-08 (-8d) | 1d → none |  | 0d → none |
| 63 | 干饰面内墙 | 2004-06-03 → 2004-05-25 (-9d) | 2004-06-15 → 2004-06-07 (-8d) | 9d → none |  | 0d → none |
| 64 | 安装干饰面内墙: 一层墙壁 | 2004-06-03 → 2004-05-25 (-9d) | 2004-06-04 → 2004-05-27 (-8d) | 2d → none |  | 0d → none |
| 65 | 安装干饰面内墙: 一层天花板 | 2004-06-07 → 2004-05-27 (-11d) | 2004-06-08 → 2004-05-31 (-8d) | 2d → none |  | 0d → none |
| 66 | 安装干饰面内墙: 二层墙壁 | 2004-06-09 → 2004-05-31 (-9d) | 2004-06-10 → 2004-06-02 (-8d) | 2d → none |  | 0d → none |
| 67 | 安装干饰面内墙: 二层天花板 | 2004-06-11 → 2004-06-02 (-9d) | 2004-06-14 → 2004-06-04 (-10d) | 2d → none |  | 0d → none |
| 68 | 测量并抹平一层的干饰面内墙 | 2004-06-09 → 2004-05-31 (-9d) | 2004-06-09 → 2004-06-01 (-8d) | 1d → none |  | 0d → none |
| 69 | 测量并抹平二层的干饰面内墙 | 2004-06-15 → 2004-06-04 (-11d) | 2004-06-15 → 2004-06-07 (-8d) | 1d → none |  | 0d → none |
| 70 | 刷油漆及贴墙纸 | 2004-06-10 → 2004-06-01 (-9d) | 2004-07-02 → 2004-06-24 (-8d) | 17d → none |  | 0d → none |
| 71 | 为一层除了入口和厨房以外的所有部分添加表面纹理 | 2004-06-10 → 2004-06-01 (-9d) | 2004-06-10 → 2004-06-02 (-8d) | 1d → none |  | 0d → none |

| ID | Task | Start | Finish | Duration | Complete | Total float |
| --- | --- | --- | --- | --- | --- | --- |
| 72 | 为一层除了入口和厨房以外的所有部分刷油漆 | 2004-06-11 → 2004-06-02 (-9d) | 2004-06-11 → 2004-06-03 (-8d) | 1d → none |  | 0d → none |
| 73 | 为一层的入口和厨房贴墙纸 | 2004-06-14 → 2004-06-03 (-11d) | 2004-06-14 → 2004-06-04 (-10d) | 1d → none |  | 0d → none |
| 74 | 为二层的所有部分添加表面纹理 | 2004-06-11 → 2004-06-02 (-9d) | 2004-06-11 → 2004-06-03 (-8d) | 1d → none |  | 0d → none |
| 75 | 为二层的所有部分刷油漆 | 2004-06-14 → 2004-06-03 (-11d) | 2004-06-14 → 2004-06-04 (-10d) | 1d → none |  | 0d → none |
| 76 | 油漆外部侧线和装饰物 | 2004-06-29 → 2004-06-18 (-11d) | 2004-07-02 → 2004-06-24 (-8d) | 4d → none |  | 0d → none |
| 77 | 橱柜 | 2004-06-15 → 2004-06-04 (-11d) | 2004-06-22 → 2004-06-14 (-8d) | 6d → none |  | 0d → none |
| 78 | 一层安装: 厨房橱柜 | 2004-06-15 → 2004-06-04 (-11d) | 2004-06-16 → 2004-06-08 (-8d) | 2d → none | 0% → 25% | 0d → none |
| 79 | 一层安装: 主卫生间和客人用卫生间橱柜 | 2004-06-17 → 2004-06-08 (-9d) | 2004-06-17 → 2004-06-09 (-8d) | 1d → none |  | 0d → none |
| 80 | 二层安装: 主卫生间和私人卫生间橱柜 | 2004-06-18 → 2004-06-09 (-9d) | 2004-06-18 → 2004-06-10 (-8d) | 1d → none |  | 0d → none |
| 81 | 安装护墙板、装饰线和装饰物 | 2004-06-21 → 2004-06-10 (-11d) | 2004-06-22 → 2004-06-14 (-8d) | 2d → none | 0% → 75% | 0d → none |
| 82 | 完成管道安装 | 2004-06-17 → 2004-06-08 (-9d) | 2004-06-24 → 2004-06-16 (-8d) | 6d → none |  | 0d → none |
| 83 | 完成一层: 厨房管道 | 2004-06-17 → 2004-06-08 (-9d) | 2004-06-17 → 2004-06-09 (-8d) | 1d → none |  | 0d → none |
| 84 | 完成一层: 主卫生间和客人用卫生间管道 | 2004-06-18 → 2004-06-09 (-9d) | 2004-06-21 → 2004-06-11 (-10d) | 2d → none |  | 0d → none |
| 85 | 完成二层: 主卫生间和私人卫生间管道 | 2004-06-22 → 2004-06-11 (-11d) | 2004-06-23 → 2004-06-15 (-8d) | 2d → none |  | 0d → none |
| 86 | 进行管道安装完成后的检查 | 2004-06-24 → 2004-06-15 (-9d) | 2004-06-24 → 2004-06-16 (-8d) | 1d → none |  | 0d → none |
| 87 | 完成电气安装 | 2004-06-24 → 2004-06-15 (-9d) | 2004-06-28 → 2004-06-18 (-10d) | 3d → none |  | 0d → none |
| 88 | 完成一层与维护面板间的电路 | 2004-06-24 → 2004-06-15 (-9d) | 2004-06-24 → 2004-06-16 (-8d) | 1d → none |  | 0d → none |
| 89 | 完成二层与维护面板间的电路 | 2004-06-25 → 2004-06-16 (-9d) | 2004-06-25 → 2004-06-17 (-8d) | 1d → none |  | 0d → none |
| 90 | 进行电气安装完成后的检查 | 2004-06-28 → 2004-06-17 (-11d) | 2004-06-28 → 2004-06-18 (-10d) | 1d → none |  | 0d → none |
| 91 | 完成通讯系统的布线(包括电话、电缆、计算机和报警系统等) | 2004-06-25 → 2004-06-16 (-9d) | 2004-06-28 → 2004-06-18 (-10d) | 2d → none |  | 0d → none |
| 92 | 完成取暖、通风和空调系统的安装 | 2004-06-29 → 2004-06-18 (-11d) | 2004-07-01 → 2004-06-23 (-8d) | 3d → none |  | 0d → none |
| 93 | 完成一层安装: 区域 1 的取暖、通风和空调系统 | 2004-06-29 → 2004-06-18 (-11d) | 2004-06-29 → 2004-06-21 (-8d) | 1d → none |  | 0d → none |
| 94 | 完成二层安装: 区域 2 的取暖、通风和空调系统 | 2004-06-30 → 2004-06-21 (-9d) | 2004-06-30 → 2004-06-22 (-8d) | 1d → none |  | 0d → none |
| 95 | 对取暖、通风和空调系统进行检查 | 2004-07-01 → 2004-06-22 (-9d) | 2004-07-01 → 2004-06-23 (-8d) | 1d → none |  | 0d → none |
| 96 | 地毯、磁砖和器具 | 2004-07-02 → 2004-06-23 (-9d) | 2004-07-13 → 2004-07-05 (-8d) | 8d → none |  | 0d → none |
| 97 | 入口、厨房和卫生间 | 2004-07-02 → 2004-06-23 (-9d) | 2004-07-06 → 2004-06-28 (-8d) | 3d → none |  | 0d → none |
| 98 | 铺一层的地毯 | 2004-07-07 → 2004-06-28 (-9d) | 2004-07-08 → 2004-06-30 (-8d) | 2d → none |  | 0d → none |
| 99 | 铺二层的地毯 | 2004-07-09 → 2004-06-30 (-9d) | 2004-07-12 → 2004-07-02 (-10d) | 2d → none |  | 0d → none |
| 100 | 安装器具 | 2004-07-13 → 2004-07-02 (-11d) | 2004-07-13 → 2004-07-05 (-8d) | 1d → none |  | 0d → none |
| 101 | 绿化和土方工作 | 2004-07-05 → 2004-06-24 (-11d) | 2004-07-20 → 2004-07-12 (-8d) | 12d → none |  | 0d → none |
| 102 | 浇注混凝土车道和人行道 | 2004-07-05 → 2004-06-24 (-11d) | 2004-07-06 → 2004-06-28 (-8d) | 2d → none |  | 0d → none |
| 103 | 安装后院围栏 | 2004-07-14 → 2004-07-05 (-9d) | 2004-07-15 → 2004-07-07 (-8d) | 2d → none |  | 0d → none |
| 104 | 铺草皮和完成绿化工作: 前院 | 2004-07-16 → 2004-07-07 (-9d) | 2004-07-19 → 2004-07-09 (-10d) | 2d → none |  | 0d → none |
| 105 | 铺草皮和完成绿化工作: 后院 | 2004-07-20 → 2004-07-09 (-11d) | 2004-07-20 → 2004-07-12 (-8d) | 1d → none |  | 0d → none |
| 106 | 最终认可 | 2004-07-21 → 2004-07-12 (-9d) | 2004-07-30 → 2004-07-22 (-8d) | 8d → none |  | 0d → none |
| 107 | 为获得居住许可进行最后的检查 | 2004-07-21 → 2004-07-12 (-9d) | 2004-07-21 → 2004-07-13 (-8d) | 1d → none |  | 0d → none |
| 108 | 进行清理以便入住 | 2004-07-22 → 2004-07-13 (-9d) | 2004-07-22 → 2004-07-14 (-8d) | 1d → none |  | 0d → none |
| 109 | 进行最后的浏览检查 | 2004-07-23 → 2004-07-14 (-9d) | 2004-07-23 → 2004-07-15 (-8d) | 1d → none |  | 0d → none |
| 110 | 完成逐项检查清单 | 2004-07-26 → 2004-07-15 (-11d) | 2004-07-30 → 2004-07-22 (-8d) | 5d → none |  | 0d → none |

## Version 5 (saved 2017-08-13, file readonlytest.xml)

Last finish 2004-07-22 → 2004-07-30 (+8d). Complete tasks 1 → 0.

Changed:

| ID | Task | Start | Finish | Complete | Other |
| --- | --- | --- | --- | --- | --- |
| 1 | 住宅建设 |  | 2004-07-22 → 2004-07-30 (+8d) |  |  |
| 2 | 单户住宅: 建筑师设计(280 平方米，并带有完整地下室) |  | 2004-07-22 → 2004-07-30 (+8d) |  |  |
| 4 | 最终确定计划并与业主和建筑师一起确定估计值 | 2004-01-01 A → 2004-01-01 | 2004-01-28 A → 2004-01-28 | 50% → 0% | resources 总承包商 [50%]; 建筑师 [50%]; 业主 [12.08%]; 抵押贷款放款人 [12.08%] → 总承包商 [50%]; 建筑师 [50%]; 业主 [12%]; 抵押贷款放款人 [12%] |
| 17 | 地基 |  | 2004-03-24 → 2004-04-01 (+8d) |  |  |
| 19 | 为地下室墙搭建模板 |  | 2004-02-13 → 2004-02-25 (+12d) |  |  |
| 20 | 为地基和地下室墙浇筑混凝土 | 2004-02-16 → 2004-02-26 (+10d) | 2004-02-24 → 2004-03-12 (+17d) | 100% → 0% |  |
| 21 | 对地下室墙进行 7 天硬化 | 2004-03-04 → 2004-03-15 (+11d) | 2004-03-09 → 2004-03-23 (+14d) | 50% → 0% |  |
| 22 | 拆除地下室墙的模板 | 2004-03-09 → 2004-03-24 (+15d) | 2004-03-11 → 2004-03-25 (+14d) |  |  |
| 23 | 对地下室墙进行防水和保温处理 | 2004-03-12 → 2004-03-26 (+14d) | 2004-03-15 → 2004-03-29 (+14d) |  |  |
| 24 | 进行地基检查 | 2004-03-16 → 2004-03-30 (+14d) | 2004-03-16 → 2004-03-30 (+14d) |  |  |
| 25 | 回填地基 | 2004-03-22 → 2004-03-31 (+9d) | 2004-03-24 → 2004-04-01 (+8d) |  |  |
| 26 | 搭建框架 | 2004-03-24 → 2004-04-02 (+9d) | 2004-04-23 → 2004-05-03 (+10d) |  |  |
| 27 | 安装第一层楼板托梁 | 2004-03-24 → 2004-04-02 (+9d) | 2004-03-26 → 2004-04-05 (+10d) |  |  |
| 28 | 安装第一层楼板 | 2004-03-26 → 2004-04-06 (+11d) | 2004-03-30 → 2004-04-07 (+8d) |  |  |
| 29 | 搭建第一层墙壁的框架 | 2004-03-30 → 2004-04-08 (+9d) | 2004-04-05 → 2004-04-13 (+8d) |  |  |
| 30 | 搭建第一层转角的框架 | 2004-04-05 → 2004-04-14 (+9d) | 2004-04-06 → 2004-04-14 (+8d) |  |  |
| 31 | 安装第二层楼板托梁 | 2004-04-06 → 2004-04-15 (+9d) | 2004-04-08 → 2004-04-16 (+8d) |  |  |
| 32 | 安装第二层楼板 | 2004-04-08 → 2004-04-19 (+11d) | 2004-04-12 → 2004-04-20 (+8d) |  |  |
| 33 | 搭建第二层墙壁的框架 | 2004-04-12 → 2004-04-21 (+9d) | 2004-04-15 → 2004-04-23 (+8d) |  |  |
| 34 | 搭建第二层转角的框架 | 2004-04-15 → 2004-04-26 (+11d) | 2004-04-19 → 2004-04-27 (+8d) |  |  |
| 35 | 完成屋顶框架的搭建 | 2004-04-19 → 2004-04-28 (+9d) | 2004-04-22 → 2004-04-30 (+8d) |  |  |
| 36 | 进行框架检查 | 2004-04-22 → 2004-05-03 (+11d) | 2004-04-23 → 2004-05-03 (+10d) |  |  |
| 37 | 干燥内部 | 2004-04-22 → 2004-05-03 (+11d) | 2004-05-24 → 2004-06-01 (+8d) |  |  |
| 38 | 安装第一层模板 | 2004-04-23 → 2004-05-04 (+11d) | 2004-04-28 → 2004-05-06 (+8d) |  |  |
| 39 | 安装第二层模板 | 2004-04-28 → 2004-05-07 (+9d) | 2004-05-03 → 2004-05-11 (+8d) |  |  |
| 40 | 安装屋顶盖板 | 2004-04-22 → 2004-05-03 (+11d) | 2004-04-27 → 2004-05-05 (+8d) |  |  |
| 41 | 安装油毡、遮雨板和砾石 | 2004-05-10 → 2004-05-19 (+9d) | 2004-05-13 → 2004-05-21 (+8d) |  |  |
| 42 | 安装第一层的户门 | 2004-05-13 → 2004-05-24 (+11d) | 2004-05-14 → 2004-05-24 (+10d) |  |  |
| 43 | 安装第一层的窗户 | 2004-05-14 → 2004-05-25 (+11d) | 2004-05-19 → 2004-05-27 (+8d) |  |  |
| 44 | 安装第二层的窗户 | 2004-05-19 → 2004-05-28 (+9d) | 2004-05-24 → 2004-06-01 (+8d) |  |  |
| 45 | 外部完成 | 2004-05-24 → 2004-06-02 (+9d) | 2004-06-18 → 2004-06-28 (+10d) |  |  |
| 46 | 完成外部砖墙 | 2004-05-24 → 2004-06-02 (+9d) | 2004-06-15 → 2004-06-23 (+8d) |  |  |
| 47 | 完成外部侧线 | 2004-06-15 → 2004-06-24 (+9d) | 2004-06-18 → 2004-06-28 (+10d) |  |  |
| 48 | 工具 Rough-Ins 及完成混凝土浇注 | 2004-04-27 → 2004-05-06 (+9d) | 2004-05-26 → 2004-06-03 (+8d) |  |  |
| 49 | 安装管道 | 2004-05-03 → 2004-05-12 (+9d) | 2004-05-10 → 2004-05-18 (+8d) |  |  |
| 50 | 对安装的管道进行检查 | 2004-05-10 → 2004-05-19 (+9d) | 2004-05-11 → 2004-05-19 (+8d) |  |  |
| 51 | 为地下室地面浇筑混凝土 | 2004-05-11 → 2004-05-20 (+9d) | 2004-05-26 → 2004-06-03 (+8d) |  |  |
| 52 | 安装电气设备 | 2004-05-03 → 2004-05-12 (+9d) | 2004-05-10 → 2004-05-18 (+8d) |  |  |
| 53 | 对安装的电气设备进行检查 | 2004-05-10 → 2004-05-19 (+9d) | 2004-05-11 → 2004-05-19 (+8d) |  |  |
| 54 | 安装取暖、通风和空调设备 | 2004-05-11 → 2004-05-20 (+9d) | 2004-05-14 → 2004-05-24 (+10d) |  |  |
| 55 | 对安装的取暖、通风和空调设备进行检查 | 2004-05-14 → 2004-05-25 (+11d) | 2004-05-17 → 2004-05-25 (+8d) |  |  |
| 56 | 安装通讯设备(电话、电缆、计算机和报警设备等) | 2004-04-27 → 2004-05-06 (+9d) | 2004-04-29 → 2004-05-07 (+8d) |  |  |
| 57 | 完成内部工作 | 2004-05-24 → 2004-06-02 (+9d) | 2004-07-05 → 2004-07-13 (+8d) |  |  |
| 58 | 保温 | 2004-05-24 → 2004-06-02 (+9d) | 2004-06-08 → 2004-06-16 (+8d) |  |  |
| 59 | 安装墙壁保温材料: 一层 | 2004-05-24 → 2004-06-02 (+9d) | 2004-05-25 → 2004-06-02 (+8d) |  |  |
| 60 | 安装墙壁保温材料: 二层 | 2004-05-25 → 2004-06-03 (+9d) | 2004-05-26 → 2004-06-03 (+8d) |  |  |
| 61 | 安装屋顶保温材料: 二层 | 2004-06-04 → 2004-06-15 (+11d) | 2004-06-07 → 2004-06-15 (+8d) |  |  |
| 62 | 进行保温检查 | 2004-06-07 → 2004-06-16 (+9d) | 2004-06-08 → 2004-06-16 (+8d) |  |  |
| 63 | 干饰面内墙 | 2004-05-25 → 2004-06-03 (+9d) | 2004-06-07 → 2004-06-15 (+8d) |  |  |
| 64 | 安装干饰面内墙: 一层墙壁 | 2004-05-25 → 2004-06-03 (+9d) | 2004-05-27 → 2004-06-04 (+8d) |  |  |
| 65 | 安装干饰面内墙: 一层天花板 | 2004-05-27 → 2004-06-07 (+11d) | 2004-05-31 → 2004-06-08 (+8d) |  |  |
| 66 | 安装干饰面内墙: 二层墙壁 | 2004-05-31 → 2004-06-09 (+9d) | 2004-06-02 → 2004-06-10 (+8d) |  |  |
| 67 | 安装干饰面内墙: 二层天花板 | 2004-06-02 → 2004-06-11 (+9d) | 2004-06-04 → 2004-06-14 (+10d) |  |  |
| 68 | 测量并抹平一层的干饰面内墙 | 2004-05-31 → 2004-06-09 (+9d) | 2004-06-01 → 2004-06-09 (+8d) |  |  |
| 69 | 测量并抹平二层的干饰面内墙 | 2004-06-04 → 2004-06-15 (+11d) | 2004-06-07 → 2004-06-15 (+8d) |  |  |
| 70 | 刷油漆及贴墙纸 | 2004-06-01 → 2004-06-10 (+9d) | 2004-06-24 → 2004-07-02 (+8d) |  |  |
| 71 | 为一层除了入口和厨房以外的所有部分添加表面纹理 | 2004-06-01 → 2004-06-10 (+9d) | 2004-06-02 → 2004-06-10 (+8d) |  |  |
| 72 | 为一层除了入口和厨房以外的所有部分刷油漆 | 2004-06-02 → 2004-06-11 (+9d) | 2004-06-03 → 2004-06-11 (+8d) |  |  |
| 73 | 为一层的入口和厨房贴墙纸 | 2004-06-03 → 2004-06-14 (+11d) | 2004-06-04 → 2004-06-14 (+10d) |  |  |
| 74 | 为二层的所有部分添加表面纹理 | 2004-06-02 → 2004-06-11 (+9d) | 2004-06-03 → 2004-06-11 (+8d) |  |  |
| 75 | 为二层的所有部分刷油漆 | 2004-06-03 → 2004-06-14 (+11d) | 2004-06-04 → 2004-06-14 (+10d) |  |  |
| 76 | 油漆外部侧线和装饰物 | 2004-06-18 → 2004-06-29 (+11d) | 2004-06-24 → 2004-07-02 (+8d) |  |  |
| 77 | 橱柜 | 2004-06-04 → 2004-06-15 (+11d) | 2004-06-14 → 2004-06-22 (+8d) |  |  |
| 78 | 一层安装: 厨房橱柜 | 2004-06-04 → 2004-06-15 (+11d) | 2004-06-08 → 2004-06-16 (+8d) | 25% → 0% |  |
| 79 | 一层安装: 主卫生间和客人用卫生间橱柜 | 2004-06-08 → 2004-06-17 (+9d) | 2004-06-09 → 2004-06-17 (+8d) |  |  |
| 80 | 二层安装: 主卫生间和私人卫生间橱柜 | 2004-06-09 → 2004-06-18 (+9d) | 2004-06-10 → 2004-06-18 (+8d) |  |  |
| 81 | 安装护墙板、装饰线和装饰物 | 2004-06-10 → 2004-06-21 (+11d) | 2004-06-14 → 2004-06-22 (+8d) | 75% → 0% |  |
| 82 | 完成管道安装 | 2004-06-08 → 2004-06-17 (+9d) | 2004-06-16 → 2004-06-24 (+8d) |  |  |
| 83 | 完成一层: 厨房管道 | 2004-06-08 → 2004-06-17 (+9d) | 2004-06-09 → 2004-06-17 (+8d) |  |  |
| 84 | 完成一层: 主卫生间和客人用卫生间管道 | 2004-06-09 → 2004-06-18 (+9d) | 2004-06-11 → 2004-06-21 (+10d) |  |  |

| ID | Task | Start | Finish |
| --- | --- | --- | --- |
| 85 | 完成二层: 主卫生间和私人卫生间管道 | 2004-06-11 → 2004-06-22 (+11d) | 2004-06-15 → 2004-06-23 (+8d) |
| 86 | 进行管道安装完成后的检查 | 2004-06-15 → 2004-06-24 (+9d) | 2004-06-16 → 2004-06-24 (+8d) |
| 87 | 完成电气安装 | 2004-06-15 → 2004-06-24 (+9d) | 2004-06-18 → 2004-06-28 (+10d) |
| 88 | 完成一层与维护面板间的电路 | 2004-06-15 → 2004-06-24 (+9d) | 2004-06-16 → 2004-06-24 (+8d) |
| 89 | 完成二层与维护面板间的电路 | 2004-06-16 → 2004-06-25 (+9d) | 2004-06-17 → 2004-06-25 (+8d) |
| 90 | 进行电气安装完成后的检查 | 2004-06-17 → 2004-06-28 (+11d) | 2004-06-18 → 2004-06-28 (+10d) |
| 91 | 完成通讯系统的布线(包括电话、电缆、计算机和报警系统等) | 2004-06-16 → 2004-06-25 (+9d) | 2004-06-18 → 2004-06-28 (+10d) |
| 92 | 完成取暖、通风和空调系统的安装 | 2004-06-18 → 2004-06-29 (+11d) | 2004-06-23 → 2004-07-01 (+8d) |
| 93 | 完成一层安装: 区域 1 的取暖、通风和空调系统 | 2004-06-18 → 2004-06-29 (+11d) | 2004-06-21 → 2004-06-29 (+8d) |
| 94 | 完成二层安装: 区域 2 的取暖、通风和空调系统 | 2004-06-21 → 2004-06-30 (+9d) | 2004-06-22 → 2004-06-30 (+8d) |
| 95 | 对取暖、通风和空调系统进行检查 | 2004-06-22 → 2004-07-01 (+9d) | 2004-06-23 → 2004-07-01 (+8d) |
| 96 | 地毯、磁砖和器具 | 2004-06-23 → 2004-07-02 (+9d) | 2004-07-05 → 2004-07-13 (+8d) |
| 97 | 入口、厨房和卫生间 | 2004-06-23 → 2004-07-02 (+9d) | 2004-06-28 → 2004-07-06 (+8d) |
| 98 | 铺一层的地毯 | 2004-06-28 → 2004-07-07 (+9d) | 2004-06-30 → 2004-07-08 (+8d) |
| 99 | 铺二层的地毯 | 2004-06-30 → 2004-07-09 (+9d) | 2004-07-02 → 2004-07-12 (+10d) |
| 100 | 安装器具 | 2004-07-02 → 2004-07-13 (+11d) | 2004-07-05 → 2004-07-13 (+8d) |
| 101 | 绿化和土方工作 | 2004-06-24 → 2004-07-05 (+11d) | 2004-07-12 → 2004-07-20 (+8d) |
| 102 | 浇注混凝土车道和人行道 | 2004-06-24 → 2004-07-05 (+11d) | 2004-06-28 → 2004-07-06 (+8d) |
| 103 | 安装后院围栏 | 2004-07-05 → 2004-07-14 (+9d) | 2004-07-07 → 2004-07-15 (+8d) |
| 104 | 铺草皮和完成绿化工作: 前院 | 2004-07-07 → 2004-07-16 (+9d) | 2004-07-09 → 2004-07-19 (+10d) |
| 105 | 铺草皮和完成绿化工作: 后院 | 2004-07-09 → 2004-07-20 (+11d) | 2004-07-12 → 2004-07-20 (+8d) |
| 106 | 最终认可 | 2004-07-12 → 2004-07-21 (+9d) | 2004-07-22 → 2004-07-30 (+8d) |
| 107 | 为获得居住许可进行最后的检查 | 2004-07-12 → 2004-07-21 (+9d) | 2004-07-13 → 2004-07-21 (+8d) |
| 108 | 进行清理以便入住 | 2004-07-13 → 2004-07-22 (+9d) | 2004-07-14 → 2004-07-22 (+8d) |
| 109 | 进行最后的浏览检查 | 2004-07-14 → 2004-07-23 (+9d) | 2004-07-15 → 2004-07-23 (+8d) |
| 110 | 完成逐项检查清单 | 2004-07-15 → 2004-07-26 (+11d) | 2004-07-22 → 2004-07-30 (+8d) |
