How a schedule from MS Project XML changed from version to version. A marks actual dates.

## Version 1 (saved 2017-08-13, file track.xml)

| ID | Task | Start | Finish | Predecessors | Complete |
| --- | --- | --- | --- | --- | --- |
| 1 | 住宅建设 | 2004-01-01 | 2004-07-22 |  |  |
| 2 | 单户住宅: 建筑师设计(280 平方米，并带有完整地下室) | 2004-01-01 | 2004-07-22 |  |  |
| 3 | 一般要求 | 2004-01-01 | 2004-01-29 |  |  |
| 4 | 最终确定计划并与业主和建筑师一起确定估计值 | 2004-01-01 | 2004-01-28 |  |  |
| 5 | 签定合同和通知以继续进行 | 2004-01-29 | 2004-01-29 | 4 |  |
| 6 | 申请许可 | 2004-01-29 | 2004-01-29 |  |  |
| 7 | 获得地基许可 | 2004-01-29 | 2004-01-29 | 5 |  |
| 8 | 获得框架许可 | 2004-01-29 | 2004-01-29 | 5 |  |
| 9 | 获得电气许可 | 2004-01-29 | 2004-01-29 | 5 |  |
| 10 | 获得管道许可 | 2004-01-29 | 2004-01-29 | 5 |  |
| 11 | 获得取暖、通风和空调许可 | 2004-01-29 | 2004-01-29 | 5 |  |
| 12 | 获得其他许可 | 2004-01-29 | 2004-01-29 | 5 |  |
| 13 | 现场工作 | 2004-01-30 | 2004-02-03 |  |  |
| 14 | 清理和挖掘场地 | 2004-01-30 | 2004-01-30 | 7, 8, 9, 10, 12, 11 |  |
| 15 | 安装临时供电设施 | 2004-02-02 | 2004-02-02 | 14 |  |
| 16 | 安装地下设施 | 2004-02-03 | 2004-02-03 | 15 |  |
| 17 | 地基 | 2004-02-04 | 2004-03-24 |  |  |
| 18 | 挖掘地基 | 2004-02-04 | 2004-02-06 | 16 |  |
| 19 | 为地下室墙搭建模板 | 2004-02-09 | 2004-02-13 | 18 |  |
| 20 | 为地基和地下室墙浇筑混凝土 | 2004-02-16 | 2004-02-24 | 19 | 100% |
| 21 | 对地下室墙进行 7 天硬化 | 2004-03-04 | 2004-03-09 | 20 | 50% |
| 22 | 拆除地下室墙的模板 | 2004-03-09 | 2004-03-11 | 21 |  |
| 23 | 对地下室墙进行防水和保温处理 | 2004-03-12 | 2004-03-15 | 22 |  |
| 24 | 进行地基检查 | 2004-03-16 | 2004-03-16 | 23, 18 |  |
| 25 | 回填地基 | 2004-03-22 | 2004-03-24 | 24 |  |
| 26 | 搭建框架 | 2004-03-24 | 2004-04-23 |  |  |
| 27 | 安装第一层楼板托梁 | 2004-03-24 | 2004-03-26 | 25 |  |
| 28 | 安装第一层楼板 | 2004-03-26 | 2004-03-30 | 27 |  |
| 29 | 搭建第一层墙壁的框架 | 2004-03-30 | 2004-04-05 | 28 |  |
| 30 | 搭建第一层转角的框架 | 2004-04-05 | 2004-04-06 | 29 |  |
| 31 | 安装第二层楼板托梁 | 2004-04-06 | 2004-04-08 | 30 |  |
| 32 | 安装第二层楼板 | 2004-04-08 | 2004-04-12 | 31 |  |
| 33 | 搭建第二层墙壁的框架 | 2004-04-12 | 2004-04-15 | 32 |  |
| 34 | 搭建第二层转角的框架 | 2004-04-15 | 2004-04-19 | 33 |  |
| 35 | 完成屋顶框架的搭建 | 2004-04-19 | 2004-04-22 | 34 |  |
| 36 | 进行框架检查 | 2004-04-22 | 2004-04-23 | 35 |  |
| 37 | 干燥内部 | 2004-04-22 | 2004-05-24 |  |  |
| 38 | 安装第一层模板 | 2004-04-23 | 2004-04-28 | 36 |  |
| 39 | 安装第二层模板 | 2004-04-28 | 2004-05-03 | 38 |  |
| 40 | 安装屋顶盖板 | 2004-04-22 | 2004-04-27 | 35 |  |
| 41 | 安装油毡、遮雨板和砾石 | 2004-05-10 | 2004-05-13 | 49 |  |
| 42 | 安装第一层的户门 | 2004-05-13 | 2004-05-14 | 41 |  |
| 43 | 安装第一层的窗户 | 2004-05-14 | 2004-05-19 | 42 |  |
| 44 | 安装第二层的窗户 | 2004-05-19 | 2004-05-24 | 43 |  |
| 45 | 外部完成 | 2004-05-24 | 2004-06-18 |  |  |
| 46 | 完成外部砖墙 | 2004-05-24 | 2004-06-15 | 44 |  |
| 47 | 完成外部侧线 | 2004-06-15 | 2004-06-18 | 46 |  |
| 48 | 工具 Rough-Ins 及完成混凝土浇注 | 2004-04-27 | 2004-05-26 |  |  |
| 49 | 安装管道 | 2004-05-03 | 2004-05-10 | 40, 39 |  |
| 50 | 对安装的管道进行检查 | 2004-05-10 | 2004-05-11 | 49 |  |
| 51 | 为地下室地面浇筑混凝土 | 2004-05-11 | 2004-05-26 | 50 |  |
| 52 | 安装电气设备 | 2004-05-03 | 2004-05-10 | 40, 39 |  |
| 53 | 对安装的电气设备进行检查 | 2004-05-10 | 2004-05-11 | 52 |  |
| 54 | 安装取暖、通风和空调设备 | 2004-05-11 | 2004-05-14 | 53 |  |
| 55 | 对安装的取暖、通风和空调设备进行检查 | 2004-05-14 | 2004-05-17 | 54 |  |
| 56 | 安装通讯设备(电话、电缆、计算机和报警设备等) | 2004-04-27 | 2004-04-29 | 40 |  |
| 57 | 完成内部工作 | 2004-05-24 | 2004-07-05 |  |  |
| 58 | 保温 | 2004-05-24 | 2004-06-08 |  |  |
| 59 | 安装墙壁保温材料: 一层 | 2004-05-24 | 2004-05-25 | 38, 44, 56, 54, 52, 39 |  |
| 60 | 安装墙壁保温材料: 二层 | 2004-05-25 | 2004-05-26 | 59 |  |
| 61 | 安装屋顶保温材料: 二层 | 2004-06-04 | 2004-06-07 | 67, 60 |  |
| 62 | 进行保温检查 | 2004-06-07 | 2004-06-08 | 61 |  |
| 63 | 干饰面内墙 | 2004-05-25 | 2004-06-07 |  |  |
| 64 | 安装干饰面内墙: 一层墙壁 | 2004-05-25 | 2004-05-27 | 59 |  |
| 65 | 安装干饰面内墙: 一层天花板 | 2004-05-27 | 2004-05-31 | 64 |  |
| 66 | 安装干饰面内墙: 二层墙壁 | 2004-05-31 | 2004-06-02 | 65, 60 |  |
| 67 | 安装干饰面内墙: 二层天花板 | 2004-06-02 | 2004-06-04 | 66 |  |
| 68 | 测量并抹平一层的干饰面内墙 | 2004-05-31 | 2004-06-01 | 65 |  |
| 69 | 测量并抹平二层的干饰面内墙 | 2004-06-04 | 2004-06-07 | 67, 68 |  |
| 70 | 刷油漆及贴墙纸 | 2004-06-01 | 2004-06-24 |  |  |

| ID | Task | Start | Finish | Predecessors | Complete |
| --- | --- | --- | --- | --- | --- |
| 71 | 为一层除了入口和厨房以外的所有部分添加表面纹理 | 2004-06-01 | 2004-06-02 | 68 |  |
| 72 | 为一层除了入口和厨房以外的所有部分刷油漆 | 2004-06-02 | 2004-06-03 | 71 |  |
| 73 | 为一层的入口和厨房贴墙纸 | 2004-06-03 | 2004-06-04 | 72 |  |
| 74 | 为二层的所有部分添加表面纹理 | 2004-06-02 | 2004-06-03 | 71 |  |
| 75 | 为二层的所有部分刷油漆 | 2004-06-03 | 2004-06-04 | 74 |  |
| 76 | 油漆外部侧线和装饰物 | 2004-06-18 | 2004-06-24 | 47 |  |
| 77 | 橱柜 | 2004-06-04 | 2004-06-14 |  |  |
| 78 | 一层安装: 厨房橱柜 | 2004-06-04 | 2004-06-08 | 73 | 25% |
| 79 | 一层安装: 主卫生间和客人用卫生间橱柜 | 2004-06-08 | 2004-06-09 | 78 |  |
| 80 | 二层安装: 主卫生间和私人卫生间橱柜 | 2004-06-09 | 2004-06-10 | 79 |  |
| 81 | 安装护墙板、装饰线和装饰物 | 2004-06-10 | 2004-06-14 | 80 | 75% |
| 82 | 完成管道安装 | 2004-06-08 | 2004-06-16 |  |  |
| 83 | 完成一层: 厨房管道 | 2004-06-08 | 2004-06-09 | 78, 50 |  |
| 84 | 完成一层: 主卫生间和客人用卫生间管道 | 2004-06-09 | 2004-06-11 | 83, 79 |  |
| 85 | 完成二层: 主卫生间和私人卫生间管道 | 2004-06-11 | 2004-06-15 | 84, 80 |  |
| 86 | 进行管道安装完成后的检查 | 2004-06-15 | 2004-06-16 | 85 |  |
| 87 | 完成电气安装 | 2004-06-15 | 2004-06-18 |  |  |
| 88 | 完成一层与维护面板间的电路 | 2004-06-15 | 2004-06-16 | 85, 53 |  |
| 89 | 完成二层与维护面板间的电路 | 2004-06-16 | 2004-06-17 | 88 |  |
| 90 | 进行电气安装完成后的检查 | 2004-06-17 | 2004-06-18 | 89 |  |
| 91 | 完成通讯系统的布线(包括电话、电缆、计算机和报警系统等) | 2004-06-16 | 2004-06-18 | 86 |  |
| 92 | 完成取暖、通风和空调系统的安装 | 2004-06-18 | 2004-06-23 |  |  |
| 93 | 完成一层安装: 区域 1 的取暖、通风和空调系统 | 2004-06-18 | 2004-06-21 | 91, 55 |  |
| 94 | 完成二层安装: 区域 2 的取暖、通风和空调系统 | 2004-06-21 | 2004-06-22 | 93 |  |
| 95 | 对取暖、通风和空调系统进行检查 | 2004-06-22 | 2004-06-23 | 94 |  |
| 96 | 地毯、磁砖和器具 | 2004-06-23 | 2004-07-05 |  |  |
| 97 | 入口、厨房和卫生间 | 2004-06-23 | 2004-06-28 | 90, 95 |  |
| 98 | 铺一层的地毯 | 2004-06-28 | 2004-06-30 | 97 |  |
| 99 | 铺二层的地毯 | 2004-06-30 | 2004-07-02 | 98 |  |
| 100 | 安装器具 | 2004-07-02 | 2004-07-05 | 99 |  |
| 101 | 绿化和土方工作 | 2004-06-24 | 2004-07-12 |  |  |
| 102 | 浇注混凝土车道和人行道 | 2004-06-24 | 2004-06-28 | 76 |  |
| 103 | 安装后院围栏 | 2004-07-05 | 2004-07-07 | 100, 102 |  |
| 104 | 铺草皮和完成绿化工作: 前院 | 2004-07-07 | 2004-07-09 | 103 |  |
| 105 | 铺草皮和完成绿化工作: 后院 | 2004-07-09 | 2004-07-12 | 104 |  |
| 106 | 最终认可 | 2004-07-12 | 2004-07-22 |  |  |
| 107 | 为获得居住许可进行最后的检查 | 2004-07-12 | 2004-07-13 | 105, 95, 90, 86, 62, 81, 51 |  |
| 108 | 进行清理以便入住 | 2004-07-13 | 2004-07-14 | 100, 107 |  |
| 109 | 进行最后的浏览检查 | 2004-07-14 | 2004-07-15 | 108 |  |
| 110 | 完成逐项检查清单 | 2004-07-15 | 2004-07-22 | 109 |  |

## Version 2 (saved 2017-08-13, file test.xml)

Last finish 2004-07-22 → 2004-07-30 (+8d). Complete tasks 1 → 0.

Changed:

| ID | Task | Start | Finish | Complete | Other |
| --- | --- | --- | --- | --- | --- |
| 1 | 住宅建设 |  | 2004-07-22 → 2004-07-30 (+8d) |  |  |
| 2 | 单户住宅: 建筑师设计(280 平方米，并带有完整地下室) |  | 2004-07-22 → 2004-07-30 (+8d) |  |  |
| 4 | 最终确定计划并与业主和建筑师一起确定估计值 |  |  |  | resources 总承包商 [50%]; 建筑师 [50%]; 业主 [12.08%]; 抵押贷款放款人 [12.08%] → 总承包商 [50%]; 建筑师 [50%]; 业主 [12%]; 抵押贷款放款人 [12%] |
| 17 | 地基 |  | 2004-03-24 → 2004-04-01 (+8d) |  |  |
| 19 | 为地下室墙搭建模板 |  | 2004-02-13 → 2004-02-25 (+12d) |  |  |
| 20 | 为地基和地下室墙浇筑混凝土 | 2004-02-16 → 2004-02-26 (+10d) | 2004-02-24 → 2004-03-12 (+17d) | 100% → 0% |  |
| 21 | 对地下室墙进行 7 天硬化 | 2004-03-04 → 2004-03-15 (+11d) | 2004-03-09 → 2004-03-23 (+14d) | 50% → 0% |  |
| 22 | 拆除地下室墙的模板 | 2004-03-09 → 2004-03-24 (+15d) | 2004-03-11 → 2004-03-25 (+14d) |  |  |
| 23 | 对地下室墙进行防水和保温处理 | 2004-03-12 → 2004-03-26 (+14d) | 2004-03-15 → 2004-03-29 (+14d) |  |  |
| 24 | 进行地基检查 | 2004-03-16 → 2004-03-30 (+14d) | 2004-03-16 → 2004-03-30 (+14d) |  |  |
| 25 | 回填地基 | 2004-03-22 → 2004-03-31 (+9d) | 2004-03-24 → 2004-04-01 (+8d) |  |  |
| 26 | 搭建框架 | 2004-03-24 → 2004-04-02 (+9d) | 2004-04-23 → 2004-05-03 (+10d) |  |  |
| 27 | 安装第一层楼板托梁 | 2004-03-24 → 2004-04-02 (+9d) | 2004-03-26 → 2004-04-05 (+10d) |  |  |
| 28 | 安装第一层楼板 | 2004-03-26 → 2004-04-06 (+11d) | 2004-03-30 → 2004-04-07 (+8d) |  |  |
| 29 | 搭建第一层墙壁的框架 | 2004-03-30 → 2004-04-08 (+9d) | 2004-04-05 → 2004-04-13 (+8d) |  |  |
| 30 | 搭建第一层转角的框架 | 2004-04-05 → 2004-04-14 (+9d) | 2004-04-06 → 2004-04-14 (+8d) |  |  |
| 31 | 安装第二层楼板托梁 | 2004-04-06 → 2004-04-15 (+9d) | 2004-04-08 → 2004-04-16 (+8d) |  |  |
| 32 | 安装第二层楼板 | 2004-04-08 → 2004-04-19 (+11d) | 2004-04-12 → 2004-04-20 (+8d) |  |  |
| 33 | 搭建第二层墙壁的框架 | 2004-04-12 → 2004-04-21 (+9d) | 2004-04-15 → 2004-04-23 (+8d) |  |  |
| 34 | 搭建第二层转角的框架 | 2004-04-15 → 2004-04-26 (+11d) | 2004-04-19 → 2004-04-27 (+8d) |  |  |
| 35 | 完成屋顶框架的搭建 | 2004-04-19 → 2004-04-28 (+9d) | 2004-04-22 → 2004-04-30 (+8d) |  |  |
| 36 | 进行框架检查 | 2004-04-22 → 2004-05-03 (+11d) | 2004-04-23 → 2004-05-03 (+10d) |  |  |
| 37 | 干燥内部 | 2004-04-22 → 2004-05-03 (+11d) | 2004-05-24 → 2004-06-01 (+8d) |  |  |
| 38 | 安装第一层模板 | 2004-04-23 → 2004-05-04 (+11d) | 2004-04-28 → 2004-05-06 (+8d) |  |  |
| 39 | 安装第二层模板 | 2004-04-28 → 2004-05-07 (+9d) | 2004-05-03 → 2004-05-11 (+8d) |  |  |
| 40 | 安装屋顶盖板 | 2004-04-22 → 2004-05-03 (+11d) | 2004-04-27 → 2004-05-05 (+8d) |  |  |
| 41 | 安装油毡、遮雨板和砾石 | 2004-05-10 → 2004-05-19 (+9d) | 2004-05-13 → 2004-05-21 (+8d) |  |  |
| 42 | 安装第一层的户门 | 2004-05-13 → 2004-05-24 (+11d) | 2004-05-14 → 2004-05-24 (+10d) |  |  |
| 43 | 安装第一层的窗户 | 2004-05-14 → 2004-05-25 (+11d) | 2004-05-19 → 2004-05-27 (+8d) |  |  |
| 44 | 安装第二层的窗户 | 2004-05-19 → 2004-05-28 (+9d) | 2004-05-24 → 2004-06-01 (+8d) |  |  |
| 45 | 外部完成 | 2004-05-24 → 2004-06-02 (+9d) | 2004-06-18 → 2004-06-28 (+10d) |  |  |
| 46 | 完成外部砖墙 | 2004-05-24 → 2004-06-02 (+9d) | 2004-06-15 → 2004-06-23 (+8d) |  |  |
| 47 | 完成外部侧线 | 2004-06-15 → 2004-06-24 (+9d) | 2004-06-18 → 2004-06-28 (+10d) |  |  |
| 48 | 工具 Rough-Ins 及完成混凝土浇注 | 2004-04-27 → 2004-05-06 (+9d) | 2004-05-26 → 2004-06-03 (+8d) |  |  |
| 49 | 安装管道 | 2004-05-03 → 2004-05-12 (+9d) | 2004-05-10 → 2004-05-18 (+8d) |  |  |
| 50 | 对安装的管道进行检查 | 2004-05-10 → 2004-05-19 (+9d) | 2004-05-11 → 2004-05-19 (+8d) |  |  |
| 51 | 为地下室地面浇筑混凝土 | 2004-05-11 → 2004-05-20 (+9d) | 2004-05-26 → 2004-06-03 (+8d) |  |  |
| 52 | 安装电气设备 | 2004-05-03 → 2004-05-12 (+9d) | 2004-05-10 → 2004-05-18 (+8d) |  |  |
| 53 | 对安装的电气设备进行检查 | 2004-05-10 → 2004-05-19 (+9d) | 2004-05-11 → 2004-05-19 (+8d) |  |  |
| 54 | 安装取暖、通风和空调设备 | 2004-05-11 → 2004-05-20 (+9d) | 2004-05-14 → 2004-05-24 (+10d) |  |  |
| 55 | 对安装的取暖、通风和空调设备进行检查 | 2004-05-14 → 2004-05-25 (+11d) | 2004-05-17 → 2004-05-25 (+8d) |  |  |
| 56 | 安装通讯设备(电话、电缆、计算机和报警设备等) | 2004-04-27 → 2004-05-06 (+9d) | 2004-04-29 → 2004-05-07 (+8d) |  |  |
| 57 | 完成内部工作 | 2004-05-24 → 2004-06-02 (+9d) | 2004-07-05 → 2004-07-13 (+8d) |  |  |
| 58 | 保温 | 2004-05-24 → 2004-06-02 (+9d) | 2004-06-08 → 2004-06-16 (+8d) |  |  |
| 59 | 安装墙壁保温材料: 一层 | 2004-05-24 → 2004-06-02 (+9d) | 2004-05-25 → 2004-06-02 (+8d) |  |  |
| 60 | 安装墙壁保温材料: 二层 | 2004-05-25 → 2004-06-03 (+9d) | 2004-05-26 → 2004-06-03 (+8d) |  |  |
| 61 | 安装屋顶保温材料: 二层 | 2004-06-04 → 2004-06-15 (+11d) | 2004-06-07 → 2004-06-15 (+8d) |  |  |
| 62 | 进行保温检查 | 2004-06-07 → 2004-06-16 (+9d) | 2004-06-08 → 2004-06-16 (+8d) |  |  |
| 63 | 干饰面内墙 | 2004-05-25 → 2004-06-03 (+9d) | 2004-06-07 → 2004-06-15 (+8d) |  |  |
| 64 | 安装干饰面内墙: 一层墙壁 | 2004-05-25 → 2004-06-03 (+9d) | 2004-05-27 → 2004-06-04 (+8d) |  |  |
| 65 | 安装干饰面内墙: 一层天花板 | 2004-05-27 → 2004-06-07 (+11d) | 2004-05-31 → 2004-06-08 (+8d) |  |  |
| 66 | 安装干饰面内墙: 二层墙壁 | 2004-05-31 → 2004-06-09 (+9d) | 2004-06-02 → 2004-06-10 (+8d) |  |  |
| 67 | 安装干饰面内墙: 二层天花板 | 2004-06-02 → 2004-06-11 (+9d) | 2004-06-04 → 2004-06-14 (+10d) |  |  |
| 68 | 测量并抹平一层的干饰面内墙 | 2004-05-31 → 2004-06-09 (+9d) | 2004-06-01 → 2004-06-09 (+8d) |  |  |
| 69 | 测量并抹平二层的干饰面内墙 | 2004-06-04 → 2004-06-15 (+11d) | 2004-06-07 → 2004-06-15 (+8d) |  |  |
| 70 | 刷油漆及贴墙纸 | 2004-06-01 → 2004-06-10 (+9d) | 2004-06-24 → 2004-07-02 (+8d) |  |  |
| 71 | 为一层除了入口和厨房以外的所有部分添加表面纹理 | 2004-06-01 → 2004-06-10 (+9d) | 2004-06-02 → 2004-06-10 (+8d) |  |  |
| 72 | 为一层除了入口和厨房以外的所有部分刷油漆 | 2004-06-02 → 2004-06-11 (+9d) | 2004-06-03 → 2004-06-11 (+8d) |  |  |
| 73 | 为一层的入口和厨房贴墙纸 | 2004-06-03 → 2004-06-14 (+11d) | 2004-06-04 → 2004-06-14 (+10d) |  |  |
| 74 | 为二层的所有部分添加表面纹理 | 2004-06-02 → 2004-06-11 (+9d) | 2004-06-03 → 2004-06-11 (+8d) |  |  |
| 75 | 为二层的所有部分刷油漆 | 2004-06-03 → 2004-06-14 (+11d) | 2004-06-04 → 2004-06-14 (+10d) |  |  |
| 76 | 油漆外部侧线和装饰物 | 2004-06-18 → 2004-06-29 (+11d) | 2004-06-24 → 2004-07-02 (+8d) |  |  |
| 77 | 橱柜 | 2004-06-04 → 2004-06-15 (+11d) | 2004-06-14 → 2004-06-22 (+8d) |  |  |
| 78 | 一层安装: 厨房橱柜 | 2004-06-04 → 2004-06-15 (+11d) | 2004-06-08 → 2004-06-16 (+8d) | 25% → 0% |  |
| 79 | 一层安装: 主卫生间和客人用卫生间橱柜 | 2004-06-08 → 2004-06-17 (+9d) | 2004-06-09 → 2004-06-17 (+8d) |  |  |
| 80 | 二层安装: 主卫生间和私人卫生间橱柜 | 2004-06-09 → 2004-06-18 (+9d) | 2004-06-10 → 2004-06-18 (+8d) |  |  |
| 81 | 安装护墙板、装饰线和装饰物 | 2004-06-10 → 2004-06-21 (+11d) | 2004-06-14 → 2004-06-22 (+8d) | 75% → 0% |  |
| 82 | 完成管道安装 | 2004-06-08 → 2004-06-17 (+9d) | 2004-06-16 → 2004-06-24 (+8d) |  |  |
| 83 | 完成一层: 厨房管道 | 2004-06-08 → 2004-06-17 (+9d) | 2004-06-09 → 2004-06-17 (+8d) |  |  |
| 84 | 完成一层: 主卫生间和客人用卫生间管道 | 2004-06-09 → 2004-06-18 (+9d) | 2004-06-11 → 2004-06-21 (+10d) |  |  |

| ID | Task | Start | Finish |
| --- | --- | --- | --- |
| 85 | 完成二层: 主卫生间和私人卫生间管道 | 2004-06-11 → 2004-06-22 (+11d) | 2004-06-15 → 2004-06-23 (+8d) |
| 86 | 进行管道安装完成后的检查 | 2004-06-15 → 2004-06-24 (+9d) | 2004-06-16 → 2004-06-24 (+8d) |
| 87 | 完成电气安装 | 2004-06-15 → 2004-06-24 (+9d) | 2004-06-18 → 2004-06-28 (+10d) |
| 88 | 完成一层与维护面板间的电路 | 2004-06-15 → 2004-06-24 (+9d) | 2004-06-16 → 2004-06-24 (+8d) |
| 89 | 完成二层与维护面板间的电路 | 2004-06-16 → 2004-06-25 (+9d) | 2004-06-17 → 2004-06-25 (+8d) |
| 90 | 进行电气安装完成后的检查 | 2004-06-17 → 2004-06-28 (+11d) | 2004-06-18 → 2004-06-28 (+10d) |
| 91 | 完成通讯系统的布线(包括电话、电缆、计算机和报警系统等) | 2004-06-16 → 2004-06-25 (+9d) | 2004-06-18 → 2004-06-28 (+10d) |
| 92 | 完成取暖、通风和空调系统的安装 | 2004-06-18 → 2004-06-29 (+11d) | 2004-06-23 → 2004-07-01 (+8d) |
| 93 | 完成一层安装: 区域 1 的取暖、通风和空调系统 | 2004-06-18 → 2004-06-29 (+11d) | 2004-06-21 → 2004-06-29 (+8d) |
| 94 | 完成二层安装: 区域 2 的取暖、通风和空调系统 | 2004-06-21 → 2004-06-30 (+9d) | 2004-06-22 → 2004-06-30 (+8d) |
| 95 | 对取暖、通风和空调系统进行检查 | 2004-06-22 → 2004-07-01 (+9d) | 2004-06-23 → 2004-07-01 (+8d) |
| 96 | 地毯、磁砖和器具 | 2004-06-23 → 2004-07-02 (+9d) | 2004-07-05 → 2004-07-13 (+8d) |
| 97 | 入口、厨房和卫生间 | 2004-06-23 → 2004-07-02 (+9d) | 2004-06-28 → 2004-07-06 (+8d) |
| 98 | 铺一层的地毯 | 2004-06-28 → 2004-07-07 (+9d) | 2004-06-30 → 2004-07-08 (+8d) |
| 99 | 铺二层的地毯 | 2004-06-30 → 2004-07-09 (+9d) | 2004-07-02 → 2004-07-12 (+10d) |
| 100 | 安装器具 | 2004-07-02 → 2004-07-13 (+11d) | 2004-07-05 → 2004-07-13 (+8d) |
| 101 | 绿化和土方工作 | 2004-06-24 → 2004-07-05 (+11d) | 2004-07-12 → 2004-07-20 (+8d) |
| 102 | 浇注混凝土车道和人行道 | 2004-06-24 → 2004-07-05 (+11d) | 2004-06-28 → 2004-07-06 (+8d) |
| 103 | 安装后院围栏 | 2004-07-05 → 2004-07-14 (+9d) | 2004-07-07 → 2004-07-15 (+8d) |
| 104 | 铺草皮和完成绿化工作: 前院 | 2004-07-07 → 2004-07-16 (+9d) | 2004-07-09 → 2004-07-19 (+10d) |
| 105 | 铺草皮和完成绿化工作: 后院 | 2004-07-09 → 2004-07-20 (+11d) | 2004-07-12 → 2004-07-20 (+8d) |
| 106 | 最终认可 | 2004-07-12 → 2004-07-21 (+9d) | 2004-07-22 → 2004-07-30 (+8d) |
| 107 | 为获得居住许可进行最后的检查 | 2004-07-12 → 2004-07-21 (+9d) | 2004-07-13 → 2004-07-21 (+8d) |
| 108 | 进行清理以便入住 | 2004-07-13 → 2004-07-22 (+9d) | 2004-07-14 → 2004-07-22 (+8d) |
| 109 | 进行最后的浏览检查 | 2004-07-14 → 2004-07-23 (+9d) | 2004-07-15 → 2004-07-23 (+8d) |
| 110 | 完成逐项检查清单 | 2004-07-15 → 2004-07-26 (+11d) | 2004-07-22 → 2004-07-30 (+8d) |
